# release-plan

Schedule from MS Project, 2007-03-02 to 2007-08-30, status date 2007-03-13, 6 hours a day, A marks actual dates.
HP

## Calendars

- Standard: Mon-Fri 10:00-12:00, 13:00-17:00; Sat-Sun off.

## Resources

| Resource |
| --- |
| Steve |
| Julio |
| Ritu |
| Kumar |
| Patrick |
| Peter |
| Paul |
| Antonio |
| Julian Richards |

## Schedule

| ID | WBS | Task | Type | Duration | Start | Finish | Predecessors | Complete | Remaining | Total slack | Free slack | Constraint | Resources | Work | Actual work | Text1 | Text2 |
| --- | --- | --- | --- | --- | --- | --- | --- | --- | --- | --- | --- | --- | --- | --- | --- | --- | --- |
| 2 | 1 | **Planning** |  | 0.33d | 2007-03-02 | 2007-03-02 |  |  |  | 51.67d |  |  |  | 2h |  |  |  |
| 3 | 1.1 | Initial Release Plan |  | 2h | 2007-03-02 | 2007-03-02 |  |  |  | 51.67d |  | start no earlier than 2007-03-02 | Steve | 2h |  |  |  |
| 4 | 2 | **Core** |  | 2.33d | 2007-03-02 A | 2007-03-06 |  | 25% | 1.75d | 49.67d |  |  |  | 6h |  |  |  |
| 5 | 2.1 | **Workflow** |  | 2.33d | 2007-03-02 A | 2007-03-06 |  | 25% | 1.75d | 49.67d |  |  |  | 6h |  |  |  |
| 6 | 2.1.1 | While component |  | 1d | 2007-03-02 | 2007-03-02 |  |  |  | 51d |  | start no earlier than 2007-03-02 | Steve | 6h |  |  |  |
| 7 | 2.1.2 | SFOS-79 More workflow tests |  | 2d | 2007-03-02 | 2007-03-05 |  |  |  | 50d |  | start no earlier than 2007-03-02 |  |  |  | http://jira.smartfrog.org/jira/browse/SFOS-79 | SFOS-79 |
| 8 | 2.1.3 | Workflow documentation |  | 1d | 2007-03-02 | 2007-03-02 |  |  |  | 51d |  | start no earlier than 2007-03-02 |  |  |  |  |  |
| 9 | 2.1.4 | SFOS-83 attributes to control termination behaviour of Parallel |  | 8h | 2007-03-05 A | 2007-03-06 A |  | 100% |  |  |  | start no earlier than 2007-03-05 |  |  |  | http://jira.smartfrog.org/jira/browse/SFOS-83 | SFOS-83 |
| 10 | 3 | **Components** |  | 3d? | 2007-03-02 A | 2007-03-06 |  | 14% | 2.57d? | 127d |  |  |  | 54h | 10.5h |  |  |
| 11 | 3.1 | **XML** |  | 2d | 2007-03-02 | 2007-03-05 |  |  |  | 50d |  |  |  |  |  |  |  |
| 12 | 3.1.1 | XML documentation |  | 2d | 2007-03-02 | 2007-03-05 |  |  |  | 50d |  | start no earlier than 2007-03-02 |  |  |  |  |  |
| 13 | 3.1.2 | XML Complete | milestone | 0d | 2007-03-02 | 2007-03-02 |  |  |  | 44d |  |  |  |  |  |  |  |
| 14 | 3.2 | **JMX** |  | 1d? | 2007-03-02 | 2007-03-02 |  |  |  | 51d |  |  | Julio | 12h |  |  |  |
| 15 | 3.2.1 | Documentation |  | 1d? | 2007-03-02 | 2007-03-02 |  |  |  | 51d |  | start no earlier than 2007-03-02 | Julio | 6h |  |  |  |
| 16 | 3.3 | **Database Component** |  | 3d? | 2007-03-02 A | 2007-03-06 |  | 25% | 2.25d? | 127d |  |  | Steve | 42h | 10.5h |  |  |
| 17 | 3.3.1 | SFOS-80: CounterTransaction component |  | 1d? | 2007-03-02 A | 2007-03-02 A |  | 100% |  |  |  | start no earlier than 2007-03-02 | Steve | 6h | 6h | http://jira.smartfrog.org/jira/browse/SFOS-80 | SFOS-80 |
| 18 | 3.3.2 | SFOS-81 SQL Select component |  | 1d? | 2007-03-05 | 2007-03-05 | 17 |  |  | 127d | 0d | start no earlier than 2007-03-02 | Steve | 6h |  | http://jira.smartfrog.org/jira/browse/SFOS-81 | SFOS-81 |
| 19 | 3.3.3 | SFOS-77 Document Database |  | 1d? | 2007-03-06 | 2007-03-06 | 18, 17 |  |  | 127d | 0d | start no earlier than 2007-03-02 | Steve | 6h |  | http://jira.smartfrog.org/jira/browse/SFOS-77 | SFOS-77 |
| 20 | 3.3.4 | SFOS-82 Add tests for TerminationTransaction |  | 1d? | 2007-03-02 | 2007-03-02 |  |  |  | 129d | 2d | start no earlier than 2007-03-02 | Steve | 6h |  | http://jira.smartfrog.org/jira/browse/SFOS-77 | SFOS-82 |
| 21 | 3.3.5 | Database Complete | milestone | 0d | 2007-03-06 | 2007-03-06 | 17, 18, 19, 20 |  |  | 127d |  | start no earlier than 2007-03-02 | Steve |  |  |  |  |
| 22 | 4 | **Releases** |  | 121d | 2007-03-15 A | 2007-08-30 | 69 | 99% | 0d | 0d |  |  |  |  |  |  |  |
| 23 | 4.1 | 3.11.alpha | milestone | 0d | 2007-03-15 | 2007-03-15 |  |  |  | 36.5d |  | start no earlier than 2007-03-15 |  |  |  |  |  |
| 24 | 4.2 | 3.11.beta |  | 55d | 2007-06-15 A | 2007-08-30 A |  | 100% |  |  |  | finish no earlier than 2007-03-30 |  |  |  |  |  |
| 25 | 4.3 | 3.11.gold | milestone | 0d | 2007-04-20 | 2007-04-20 |  |  |  | 16d |  | finish no earlier than 2007-04-20 |  |  |  |  |  |

Notes:
- 7: http://jira.smartfrog.org/jira/browse/SFOS-79
- 9: http://jira.smartfrog.org/jira/browse/SFOS-83 / I note you can do the same today with Try deployments inside the Parallel / DeployVM extends Try / hostname TBD; / action extends XenDeploy / hostname PARENT:hostname; / Parallel / vm1 extends DeployVM hostname "host1";/ vm2 extends DeployVM hostname "host2"; / vm3 extends DeployVM hostname "host3"; / So its something you can already deal with with some form of composition. Still, there's no reason to hard code policy in a container when a single property can manage it. / One question, what should we do if a child fails to deploy? I dont like ignoring that as it can be a symptom of a deeper problem. / I think it may be best to have two attributes so both behaviours can be controlled: / //terminate if a child terminates / terminateOnAbnormalChildTermination true; / //terminate if a child wont deploy / terminateOnAbnormalChildDeploy true;
- 17: http://jira.smartfrog.org/jira/browse/SFOS-80
- 18: http://jira.smartfrog.org/jira/browse/SFOS-81
- 19: http://jira.smartfrog.org/jira/browse/SFOS-77
- 20: http://jira.smartfrog.org/jira/browse/SFOS-77

| ID | WBS | Task | Type | Duration | Start | Finish | Predecessors | Complete | Remaining | Total slack | Free slack | Constraint | Resources | Work | Actual work | Text1 | Text2 |
| --- | --- | --- | --- | --- | --- | --- | --- | --- | --- | --- | --- | --- | --- | --- | --- | --- | --- |
| 26 | 5 | **NetBeans Plugin** |  | 3d? | 2007-03-02 A | 2007-03-06 |  | 50% | 1.5d? | 127d |  |  |  |  |  |  |  |
| 27 | 5.1 | Obtain Source |  | 1d? | 2007-03-02 A | 2007-03-02 A |  | 100% |  |  |  | start no earlier than 2007-03-02 |  |  |  |  |  |
| 28 | 5.2 | Add to build process |  | 1d? | 2007-03-05 A | 2007-03-05 A | 27 | 100% |  |  |  | start no earlier than 2007-03-02 |  |  |  |  |  |
| 29 | 5.3 | Build and package |  | 1d? | 2007-03-06 | 2007-03-06 | 28 |  |  | 127d | 0d | start no earlier than 2007-03-02 |  |  |  |  |  |
| 30 | 5.4 | Documentation |  | 1d? | 2007-03-05 | 2007-03-05 | 27 |  |  | 128d | 1d | start no earlier than 2007-03-02 |  |  |  |  |  |
| 31 | 5.5 | Netbeans Plugin ready | milestone | 0d | 2007-03-06 | 2007-03-06 | 29, 30 |  |  | 127d |  | start no earlier than 2007-03-02 |  |  |  |  |  |
| 32 | 6 | **Documentation** |  | 10d? | 2007-03-02 A | 2007-03-15 |  | 60% | 4.04d? | 120d |  |  |  | 68h | 62h |  |  |
| 33 | 6.1 | SFOS-85 Update sfReference |  | 2w? | 2007-03-02 A | 2007-03-15 A |  | 100% |  |  |  | start no earlier than 2007-03-02 | Patrick | 60h | 60h | http://jira.smartfrog.org/jira/browse/SFOS-85 | SFOS-85 |
| 34 | 6.2 | Review quick reference |  | 1d? | 2007-03-02 | 2007-03-02 |  |  |  | 51d |  | start no earlier than 2007-03-02 |  |  |  |  |  |
| 35 | 6.3 | Review tutorial |  | 1d? | 2007-03-02 | 2007-03-02 |  |  |  | 51d |  | start no earlier than 2007-03-02 |  |  |  |  |  |
| 36 | 6.4 | SFOS-86 Review logging docs |  | 1d? | 2007-03-02 | 2007-03-02 |  |  |  | 51d |  | start no earlier than 2007-03-02 | Julio | 6h |  | http://jira.smartfrog.org/jira/browse/SFOS-86 | SFOS-86 |
| 37 | 6.5 | SFOS-87 Review runshell documentation |  | 1d? | 2007-03-07 | 2007-03-07 |  |  |  | 48d |  | start no earlier than 2007-03-07 |  |  |  | http://jira.smartfrog.org/jira/browse/SFOS-87 | SFOS-87 |
| 38 | 6.6 | Review IDE development |  | 1d? | 2007-03-02 | 2007-03-02 |  |  |  | 51d |  | start no earlier than 2007-03-02 |  |  |  |  |  |
| 39 | 6.7 | Review autoloader |  | 1d? | 2007-03-02 | 2007-03-02 |  |  |  | 51d |  | start no earlier than 2007-03-02 |  |  |  |  |  |
| 40 | 6.8 | Review dynamic web server example |  | 1d? | 2007-03-02 | 2007-03-02 |  |  |  | 51d |  | start no earlier than 2007-03-02 |  |  |  |  |  |
| 41 | 6.9 | Release Manager installs Forrest |  | 2h | 2007-03-02 A | 2007-03-02 A |  | 100% |  |  |  | start no earlier than 2007-03-02 | Steve | 2h | 2h |  |  |
| 42 | 7 | **System Setup** |  | 5.17d? | 2007-03-06 A | 2007-03-13 A |  | 100% |  |  |  |  |  |  |  |  |  |
| 43 | 7.1 | Create Release Ubuntu VM Image |  | 4d | 2007-03-06 A | 2007-03-09 A |  | 100% |  |  |  | start no earlier than 2007-03-06 |  |  |  |  |  |
| 44 | 7.2 | Install Java 5 |  | 1h | 2007-03-12 A | 2007-03-12 A | 43 | 100% |  |  |  | start no earlier than 2007-03-06 |  |  |  |  |  |
| 45 | 7.3 | Install Ant1.7 |  | 1d? | 2007-03-12 A | 2007-03-13 A | 44 | 100% |  |  |  | start no earlier than 2007-03-06 |  |  |  |  |  |
| 46 | 7.4 | Install Forrest |  | 1d? | 2007-03-12 A | 2007-03-13 A | 44 | 100% |  |  |  | start no earlier than 2007-03-06 |  |  |  |  |  |
| 47 | 7.5 | check out |  | 1d? | 2007-03-12 A | 2007-03-12 A | 43 | 100% |  |  |  | start no earlier than 2007-03-06 |  |  |  |  |  |
| 48 | 7.6 | successful build on clean system | milestone | 0d | 2007-03-13 A | 2007-03-13 A | 46, 47 | 100% |  |  |  | start no earlier than 2007-03-06 |  |  |  |  |  |
| 50 | 8 | **Build/Release Process** |  | 4d? | 2007-03-02 | 2007-03-07 |  |  |  | 48d |  |  |  |  |  |  |  |
| 51 | 8.1 | Luntbuild to build core |  | 1d? | 2007-03-02 | 2007-03-02 |  |  |  | 51d |  | start no earlier than 2007-03-02 |  |  |  |  |  |
| 52 | 8.2 | Luntbuild to build components |  | 1d? | 2007-03-02 | 2007-03-02 |  |  |  | 51d |  | start no earlier than 2007-03-02 |  |  |  |  |  |
| 53 | 8.3 | Boomerang? |  | 1d? | 2007-03-02 | 2007-03-02 |  |  |  | 51d |  | start no earlier than 2007-03-02 |  |  |  |  |  |

Notes:
- 36: http://jira.smartfrog.org/jira/browse/SFOS-86

| ID | WBS | Task | Duration | Start | Finish | Predecessors | Complete | Remaining | Total slack | Free slack | Constraint | Resources | Work | Actual work |
| --- | --- | --- | --- | --- | --- | --- | --- | --- | --- | --- | --- | --- | --- | --- |
| 54 | 8.4 | **Publish to the Maven Repo** | 2d? | 2007-03-06 | 2007-03-07 |  |  |  | 48d |  |  |  |  |  |
| 55 | 8.4.1 | Ivy task to create POM files | 2d | 2007-03-06 | 2007-03-07 |  |  |  | 48d |  | start no earlier than 2007-03-06 |  |  |  |
| 56 | 8.4.2 | Publish to local repostory | 1d? | 2007-03-06 | 2007-03-06 |  |  |  | 49d |  | start no earlier than 2007-03-06 |  |  |  |
| 57 | 8.4.3 | Publish beta to central repository | 1d? | 2007-03-06 | 2007-03-06 |  |  |  | 49d |  | start no earlier than 2007-03-06 |  |  |  |
| 58 | 8.4.4 | Publish Release to central repository | 1d? | 2007-03-06 | 2007-03-06 |  |  |  | 49d |  | start no earlier than 2007-03-06 |  |  |  |
| 59 | 9 | Defects | 1d? | 2007-03-02 | 2007-03-02 |  |  |  | 51d |  | start no earlier than 2007-03-02 |  |  |  |
| 61 | 10 | **External Components** | 1d? | 2007-03-05 A | 2007-03-05 |  | 50% | 0.5d? | 128d |  |  |  |  |  |
| 62 | 10.1 | CERN RPMs | 1d? | 2007-03-05 A | 2007-03-05 A |  | 100% |  |  |  | start no earlier than 2007-03-05 |  |  |  |
| 63 | 10.2 | CERN Xen components | 1d? | 2007-03-05 | 2007-03-05 |  |  |  | 50d |  | start no earlier than 2007-03-05 |  |  |  |
| 64 | 11 | **Public Events** | 52d | 2007-03-02 A | 2007-05-14 A |  | 100% |  |  |  |  |  | 96h | 96h |
| 65 | 11.1 | ApacheCon slides+demo | 3d | 2007-03-02 A | 2007-03-06 A |  | 100% |  |  |  |  | Steve; Julio | 36h | 36h |
| 66 | 11.2 | ApacheCon | 3d | 2007-05-02 A | 2007-05-04 A | 65 | 100% |  |  |  | must start on 2007-05-02 | Steve; Julio | 36h | 36h |
| 67 | 11.3 | GGF20 | 4d | 2007-05-09 A | 2007-05-14 A |  | 100% |  |  |  | must start on 2007-05-09 | Steve | 24h | 24h |
| 68 | 12 | **Articles and Press** | 2d | 2007-03-02 | 2007-03-05 |  |  |  | 50d |  |  |  | 3h |  |
| 69 | 12.1 | Release press note | 3h | 2007-03-02 | 2007-03-02 |  |  |  | 51.5d | 8.5d |  | Julian Richards | 3h |  |
| 70 | 12.2 | HP Developer Articles | 2d | 2007-03-02 | 2007-03-05 |  |  |  | 50d |  |  |  |  |  |
