# release-plan

Schedule from MS Project, 2005-02-21 to 2007-05-15, 6 hours a day, A marks actual dates.
HP

## Calendars

- Standard: Mon-Fri 10:00-12:00, 13:00-16:00; Sat-Sun off.

## Resources

| Resource |
| --- |
| Steve |
| Julio |
| Ritu |
| Kumar |
| Patrick |
| Peter |
| Paul |
| Antonio |
| Julian Richards |

## Schedule

| ID | WBS | Task | Type | Duration | Start | Finish | Predecessors | Complete | Remaining | Total slack | Free slack | Constraint | Resources | Work | Actual work |
| --- | --- | --- | --- | --- | --- | --- | --- | --- | --- | --- | --- | --- | --- | --- | --- |
| 1 | 1 | **Public Events** |  | 44d | 2007-03-02 | 2007-05-15 |  |  |  | 0d |  |  |  | 72h |  |
| 2 | 1.1 | ApacheCon slides+demo |  | 3d | 2007-03-02 | 2007-03-07 |  |  |  | 32.83d |  |  | Steve; Julio | 36h |  |
| 3 | 1.2 | ApacheCon |  | 3d | 2007-05-02 | 2007-05-07 | 2 |  |  | 0d |  | must start on 2007-05-02 | Steve; Julio | 36h |  |
| 4 | 1.3 | GGF20 |  | 4d | 2007-05-09 | 2007-05-15 |  |  |  | 0d |  | must start on 2007-05-09 |  |  |  |
| 6 | 2 | **Investigation** |  | 6.67d? | 2007-03-02 | 2007-03-13 |  |  |  | 37.33d |  |  |  |  |  |
| 7 | 2.1 | WebLogic |  | 6.67d? | 2007-03-02 | 2007-03-13 |  |  |  | 37.33d |  |  |  |  |  |
| 9 | 3 | Core | milestone | 0d | 2007-03-02 | 2007-03-02 |  |  |  | 44d |  |  |  |  |  |
| 11 | 4 | **Components** |  | 444.83d? | 2005-02-21 A | 2007-03-08 |  | 5% | 423.48d? | 40d |  |  |  | 48h | 4.8h |
| 12 | 4.1 | **XML** |  | 4d? | 2005-02-21 A | 2005-02-25 |  | 20% | 3.2d? | 480.83d |  |  |  | 8h | 4.8h |
| 13 | 4.1.1 | Generation |  | 1.33d? | 2005-02-21 A | 2005-02-22 |  | 60% | 0.53d? | 480.83d | 0d |  | Steve | 8h | 4.8h |
| 14 | 4.1.2 | Load |  | 1.33d? | 2005-02-22 | 2005-02-24 | 13 |  |  | 480.83d | 0d |  |  |  |  |
| 15 | 4.1.3 | Patch |  | 1.33d? | 2005-02-24 | 2005-02-25 | 14 |  |  | 480.83d | 0d |  |  |  |  |
| 16 | 4.1.4 | XML Complete | milestone | 0d | 2005-02-25 | 2005-02-25 | 15 |  |  | 480.83d |  |  |  |  |  |
| 17 | 4.2 | JMX |  | 6.67d | 2005-02-28 | 2005-03-09 |  |  |  | 474d |  | start no earlier than 2005-02-28 | Julio | 40h |  |
| 18 | 4.3 | Java Component |  | 1d? | 2007-03-02 | 2007-03-05 |  |  |  | 43d |  |  |  |  |  |
| 19 | 4.4 | **JUnit component** |  | 4d? | 2007-03-02 | 2007-03-08 |  |  |  | 40d |  |  |  |  |  |
| 20 | 4.4.1 | JUnit tracing component |  | 1d | 2007-03-02 | 2007-03-05 |  |  |  | 42d | 2d |  |  |  |  |
| 21 | 4.4.2 | JUnit report save/postprocess |  | 3d? | 2007-03-02 | 2007-03-07 |  |  |  | 40d | 0d |  |  |  |  |
| 22 | 4.4.3 | JUnit documentation |  | 1d? | 2007-03-07 | 2007-03-08 | 20, 21 |  |  | 40d |  |  |  |  |  |
| 24 | 5 | Extras |  | 1.33d? | 2007-03-02 | 2007-03-05 |  |  |  | 42.67d |  |  |  |  |  |
| 26 | 6 | **Functionality Milestones** |  | 0d | 2007-03-02 | 2007-03-02 |  |  |  | 44d |  |  |  |  |  |
| 27 | 6.1 | Investigation Complete | milestone | 0d | 2007-03-02 | 2007-03-02 |  |  |  | 44d |  |  |  |  |  |
| 29 | 7 | **Articles and Press** |  | 2d | 2007-03-02 | 2007-03-06 |  |  |  | 42d |  |  |  | 3h |  |
| 30 | 7.1 | Release press note |  | 3h | 2007-03-02 | 2007-03-02 |  |  |  | 42.17d | 0d |  | Julian Richards | 3h |  |
| 31 | 7.2 | TSS Article |  | 2d | 2007-03-02 | 2007-03-06 |  |  |  | 42d |  |  |  |  |  |
| 32 | 7.3 | HP Developer Articles |  | 2d | 2007-03-02 | 2007-03-06 |  |  |  | 42d |  |  |  |  |  |
| 34 | 8 | Releases |  | 1.33d? | 2007-03-02 | 2007-03-06 | 30 |  |  | 42.17d |  |  |  |  |  |
| 35 | 9 | 3.11.alpha | milestone | 0d | 2007-03-02 | 2007-03-02 |  |  |  | 44d |  | start no earlier than 2007-03-02 |  |  |  |
| 36 | 10 | 3.11.beta | milestone | 0d | 2007-03-02 | 2007-03-02 |  |  |  | 44d |  | start no earlier than 2007-03-02 |  |  |  |
| 37 | 11 | 3.11.gold | milestone | 0d | 2007-03-02 | 2007-03-02 |  |  |  | 44d |  | start no earlier than 2007-03-02 |  |  |  |
| 39 | 12 | External Dependencies |  | 1.33d? | 2007-03-02 | 2007-03-05 |  |  |  | 42.67d |  |  |  |  |  |
| 41 | 13 | web site |  | 1d? | 2007-03-02 | 2007-03-05 |  |  |  | 43d |  |  |  |  |  |

Notes:
- 18: Documentation. Anything else
- 26: These are things we can check off as done when we have the tests working, and represent major milestones in usable functionality. / Essentially, these are "stories" or "Use Cases"
- 27: Here we know what we want to do.
